Schedule from MS Project, 2020-03-27 to 2020-06-23, costs in ¥.

## Calendars

- 标准: Mon-Fri 08:00-12:00, 13:00-17:00; Sat-Sun off.

## Resources

| Resource |
| --- |
| 项目经理 |
| UI专家 |
| 需求专家 |
| 设计专家 |
| 质量专家 |
| 测试员1 |
| 程序员1 |
| 程序员2 |
| 程序员3 |
| 程序员4 |
| 测试员2 |
| 程序员5 |

## Schedule

| ID | WBS | Task | Type | Duration | Start | Finish | Predecessors | Resources | Work | Cost |
| --- | --- | --- | --- | --- | --- | --- | --- | --- | --- | --- |
| 1 | 1 | **启动** |  | 3d | 2020-03-27 | 2020-03-31 |  | 项目经理; UI专家 | 96h | 8,240 |
| 2 | 1.1 | 组建核心团队 | manual | 1d | 2020-03-27 | 2020-03-27 |  | 项目经理 [50%]; UI专家 [50%] | 8h | 720 |
| 3 | 1.2 | 干系人分析 | manual | 1d | 2020-03-27 | 2020-03-27 |  | 项目经理 | 8h | 800 |
| 4 | 1.3 | 里程碑计划 | manual | 1d | 2020-03-27 | 2020-03-27 |  | 项目经理 | 8h | 800 |
| 5 | 1.4 | 制定项目章程 | manual | 1d | 2020-03-30 | 2020-03-30 | 2, 3, 4 | 项目经理 | 8h | 800 |
| 6 | 1.5 | 项目启动大会 | manual | 1d | 2020-03-31 | 2020-03-31 | 5 | 项目经理; 需求专家 | 16h | 800 |
| 7 | 2 | **规划** |  | 17d | 2020-04-01 | 2020-04-23 |  |  | 384h | 37,760 |
| 8 | 2.1 | **规划范围** |  | 6d | 2020-04-01 | 2020-04-08 |  |  | 80h | 6,080 |
| 9 | 2.1.1 | 制定需求说明书 | manual | 1d | 2020-04-01 | 2020-04-01 | 6 | 需求专家 | 8h |  |
| 10 | 2.1.2 | 界面设计 | manual | 2d | 2020-04-02 | 2020-04-03 | 9 | UI专家 | 16h | 1,280 |
| 11 | 2.1.3 | 详细设计说明书 | manual | 1d | 2020-04-02 | 2020-04-02 | 9 | 设计专家 | 8h |  |
| 12 | 2.1.4 | 项目范围说明书 | manual | 1d | 2020-04-02 | 2020-04-02 | 9 | 项目经理 | 8h | 800 |
| 13 | 2.1.5 | 创建WBS | manual | 3d | 2020-04-06 | 2020-04-08 | 10, 11, 12 | 项目经理 | 24h | 2,400 |
| 14 | 2.1.6 | 形成范围基准 | manual | 2d | 2020-04-09 | 2020-04-10 | 13 | 项目经理 | 16h | 1,600 |
| 15 | 2.2 | **规划时间** |  | 6d | 2020-04-07 | 2020-04-14 |  |  | 56h | 5,600 |
| 16 | 2.2.1 | 排列工作包顺序 | manual | 1d | 2020-04-06 | 2020-04-06 | 14 | 项目经理 | 8h | 800 |
| 17 | 2.2.2 | 估算资源 | manual | 2d | 2020-04-07 | 2020-04-08 | 16 | 项目经理 | 16h | 1,600 |
| 18 | 2.2.3 | 估算持续时间 | manual | 2d | 2020-04-09 | 2020-04-10 | 17 | 项目经理 | 16h | 1,600 |
| 19 | 2.2.4 | 制定进度计划 | manual | 1d | 2020-04-13 | 2020-04-13 | 18 | 项目经理 | 8h | 800 |
| 20 | 2.2.5 | 形成进度基准 | manual | 1d | 2020-04-14 | 2020-04-14 | 19 | 项目经理 | 8h | 800 |
| 21 | 2.3 | **规划成本** |  | 3d | 2020-04-15 | 2020-04-17 |  |  | 48h | 4,800 |
| 22 | 2.3.1 | 项目成本估算 | manual | 3d | 2020-04-15 | 2020-04-17 | 20 | 项目经理 | 24h | 2,400 |
| 23 | 2.3.2 | 项目预算 | manual | 2d | 2020-04-16 | 2020-04-17 | 22 | 项目经理 | 16h | 1,600 |
| 24 | 2.3.3 | 形成范围基准 | manual | 1d | 2020-04-17 | 2020-04-17 | 23 | 项目经理 | 8h | 800 |

| ID | WBS | Task | Type | Duration | Start | Finish | Predecessors | Resources | Work | Cost |
| --- | --- | --- | --- | --- | --- | --- | --- | --- | --- | --- |
| 25 | 2.4 | **规划质量** |  | 7d | 2020-04-18 | 2020-04-27 |  |  | 64h | 7,680 |
| 26 | 2.4.1 | 制定测试计划 | manual | 2d | 2020-04-13 | 2020-04-14 | 14 | 质量专家 | 16h | 1,920 |
| 27 | 2.4.2 | 制定测试用例 | manual | 6d | 2020-04-15 | 2020-04-22 | 26 | 质量专家 | 48h | 5,760 |
| 28 | 2.5 | **规划人力资源** |  | 3d | 2020-04-20 | 2020-04-22 |  |  | 32h | 3,200 |
| 29 | 2.5.1 | 制定人力资源计划 | manual | 2d | 2020-04-09 | 2020-04-10 | 17 | 项目经理 | 16h | 1,600 |
| 30 | 2.5.2 | 制定人员配备管理计划 | manual | 2d | 2020-04-13 | 2020-04-14 | 29 | 项目经理 | 16h | 1,600 |
| 31 | 2.6 | **规划沟通** |  | 3d | 2020-04-15 | 2020-04-17 |  |  | 16h | 1,600 |
| 32 | 2.6.1 | 制定沟通管理计划 | manual | 2d | 2020-04-15 | 2020-04-16 | 30 | 项目经理 | 16h | 1,600 |
| 33 | 2.7 | **规划采购** |  | 6d | 2020-04-17 | 2020-04-24 |  |  | 56h | 5,600 |
| 34 | 2.7.1 | 自制外购分析 | manual | 2d | 2020-04-09 | 2020-04-10 | 17 | 项目经理 | 16h | 1,600 |
| 35 | 2.7.2 | 制定采购文件 | manual | 5d | 2020-04-13 | 2020-04-17 | 34 | 项目经理 | 40h | 4,000 |
| 36 | 2.8 | **规划风险** |  | 3d | 2020-04-24 | 2020-04-28 |  |  | 24h | 2,400 |
| 37 | 2.8.1 | 识别风险 | manual | 1d | 2020-04-28 | 2020-04-28 | 15, 21, 25, 28 | 项目经理 | 8h | 800 |
| 38 | 2.8.2 | 风险分析 | manual | 1d | 2020-04-29 | 2020-04-29 | 37 | 项目经理 | 8h | 800 |
| 39 | 2.8.3 | 制定风险登记册 | manual | 1d | 2020-04-30 | 2020-04-30 | 38 | 项目经理 | 8h | 800 |
| 40 | 2.9 | 规划整合 | manual | 1d | 2020-05-01 | 2020-05-01 | 39 | 项目经理 | 8h | 800 |
| 41 | 3 | **执行与监控** |  | 21d? | 2020-05-02 | 2020-05-29 |  |  | 744h | 74,000 |
| 42 | 3.1 | 组建项目团队 | manual | 3d | 2020-04-24 | 2020-04-28 | 7 | 项目经理; 测试员1 | 48h | 4,800 |
| 43 | 3.2 | **项目执行** |  | 9d | 2020-05-02 | 2020-05-13 |  |  | 344h | 36,880 |
| 44 | 3.2.1 | **首页模块** |  | 9d | 2020-05-02 | 2020-05-13 |  |  | 80h | 8,000 |
| 45 | 3.2.1.1 | 个人推荐 | manual | 4d | 2020-04-29 | 2020-05-04 | 42 | 程序员1 | 32h | 3,200 |
| 46 | 3.2.1.2 | 轮播图 | manual | 1d | 2020-05-02 | 2020-05-02 |  | 程序员1 | 8h | 800 |
| 47 | 3.2.1.3 | 小模块 | manual | 5d | 2020-05-02 | 2020-05-07 |  | 程序员1 | 40h | 4,000 |
| 48 | 3.2.2 | **医院模块** |  | 3d | 2020-05-02 | 2020-05-05 |  |  | 24h | 2,400 |
| 49 | 3.2.2.1 | 地图 | manual | 2d | 2020-05-02 | 2020-05-04 |  | 程序员2 | 16h | 1,600 |
| 50 | 3.2.2.2 | 搜索 | manual | 1d | 2020-05-03 | 2020-05-03 |  | 程序员2 | 8h | 800 |

| ID | WBS | Task | Type | Duration | Start | Finish | Predecessors | Total slack | Resources | Work | Cost |
| --- | --- | --- | --- | --- | --- | --- | --- | --- | --- | --- | --- |
| 51 | 3.2.3 | **心率模块** |  | 9d | 2020-05-04 | 2020-05-14 |  |  |  | 88h | 9,240 |
| 52 | 3.2.3.1 | 测心率 | manual | 5d | 2020-04-29 | 2020-05-05 | 42 |  | 程序员3 | 40h | 4,200 |
| 53 | 3.2.3.2 | 显示数据 | manual | 6d | 2020-05-06 | 2020-05-13 | 52 |  | 程序员3 | 48h | 5,040 |
| 54 | 3.2.4 | **交流模块** |  | 6d | 2020-05-14 | 2020-05-21 |  |  |  | 48h | 5,280 |
| 55 | 3.2.4.1 | 发布问题 | manual | 4d | 2020-05-14 | 2020-05-19 | 42 |  | 程序员4 | 32h | 3,520 |
| 56 | 3.2.4.2 | 回复 | manual | 2d | 2020-05-05 | 2020-05-06 | 55 |  | 程序员4 | 16h | 1,760 |
| 57 | 3.2.5 | **我的模块** |  | 10d | 2020-05-02 | 2020-05-14 |  |  |  | 104h | 11,960 |
| 58 | 3.2.5.1 | 登录 | manual | 6d | 2020-05-02 | 2020-05-08 | 42 |  | 程序员5 | 48h | 5,520 |
| 59 | 3.2.5.2 | 个人信息 | manual | 1d | 2020-05-09 | 2020-05-09 | 58 |  | 程序员5 | 8h | 920 |
| 60 | 3.2.5.3 | 身体数据 | manual | 1d | 2020-05-06 | 2020-05-06 | 52 |  | 程序员5 | 8h | 920 |
| 61 | 3.2.5.4 | 最近阅读 | manual | 2d | 2020-05-07 | 2020-05-08 |  |  | 程序员5 | 16h | 1,840 |
| 62 | 3.2.5.5 | 设置 | manual | 1d | 2020-05-02 | 2020-05-02 |  |  | 程序员5 | 8h | 920 |
| 63 | 3.2.5.6 | 收藏 | manual | 2d | 2020-05-06 | 2020-05-07 |  |  | 程序员5 | 16h | 1,840 |
| 64 | 3.3 | **项目监控** |  | 3d | 2020-05-22 | 2020-05-26 |  |  |  | 72h | 5,520 |
| 65 | 3.3.1 | 各项指标监控 |  | 1d | 2020-05-22 | 2020-05-22 | 42 | 0d | 项目经理; 测试员1 | 16h | 1,600 |
| 66 | 3.3.2 | 监控评审 | manual | 1d | 2020-05-23 | 2020-05-23 | 65 |  | 设计专家; 项目经理 | 16h | 800 |
| 67 | 3.3.3 | 变更评审 | manual | 1d | 2020-05-24 | 2020-05-24 | 66 |  | 设计专家; 项目经理 | 16h | 800 |
| 68 | 3.3.4 | 例会 | manual | 1d | 2020-05-25 | 2020-05-25 | 42 |  | UI专家; 测试员1; 测试员2 | 24h | 2,320 |
| 69 | 3.4 | **管理干系人** |  | 1d | 2020-05-25 | 2020-05-25 |  |  |  | 24h | 2,400 |
| 70 | 3.4.1 | 发布项目信息 | manual | 1d | 2020-04-29 | 2020-04-29 | 42 |  | 项目经理 | 8h | 800 |
| 71 | 3.4.2 | 报告监控指标 | manual | 1d | 2020-04-29 | 2020-04-29 | 42 |  | 项目经理 | 8h | 800 |
| 72 | 3.4.3 | 干系人沟通 | manual | 1d | 2020-05-25 | 2020-05-25 |  |  | 项目经理 | 8h | 800 |
| 73 | 3.5 | **团队建设** |  | 1d | 2020-05-26 | 2020-05-26 |  |  |  | 72h | 6,960 |
| 74 | 3.5.1 | 培训 | manual | 1d | 2020-05-26 | 2020-05-26 | 42 |  | UI专家; 测试员1; 测试员2 | 24h | 2,320 |
| 75 | 3.5.2 | 娱乐活动 | manual | 1d | 2020-05-26 | 2020-05-26 | 42 |  | UI专家; 测试员1; 测试员2 | 24h | 2,320 |
| 76 | 3.5.3 | 沟通 | manual | 1d | 2020-05-26 | 2020-05-26 | 42 |  | UI专家; 测试员1; 测试员2 | 24h | 2,320 |
| 77 | 3.6 | 采购 | manual | 20d | 2020-05-27 | 2020-06-23 | 42 |  | 项目经理 | 160h | 16,000 |
| 78 | 3.7 | 项目验收 | manual | 1d | 2020-05-14 | 2020-05-14 | 43 |  | UI专家; 测试员1; 设计专家 | 24h | 1,440 |

| ID | WBS | Task | Type | Duration | Start | Finish | Predecessors | Resources | Work | Cost |
| --- | --- | --- | --- | --- | --- | --- | --- | --- | --- | --- |
| 79 | 4 | **收尾** |  | 1d | 2020-05-28 | 2020-05-28 |  |  | 56h | 4,560 |
| 80 | 4.1 | 项目终验 | manual | 1d | 2020-05-15 | 2020-05-15 | 78 | UI专家; 测试员1; 设计专家 | 24h | 1,440 |
| 81 | 4.2 | 结束采购 | manual | 1d | 2020-05-15 | 2020-05-15 | 78 | 项目经理 | 8h | 800 |
| 82 | 4.3 | 项目内部收尾 | manual | 1d | 2020-05-15 | 2020-05-15 | 78 | UI专家; 测试员1; 测试员2 | 24h | 2,320 |
